# National Health Campaign

Schedule from MS Project, 2024-03-05 to 2024-04-14, costs in €, A marks actual dates.
Research Programme
ABC Research Ltd

## Calendars

- Standard: Mon-Fri 08:00-12:00, 13:00-17:00; Sat-Sun off.

## Resources

| Resource | Group | Rate |
| --- | --- | --- |
| Joanne Kelly | Management | 19.23 |
| Riona Carr | Executive | 6.25 |
| Mary Bean | Management | 19.23 |
| Tom Joyce | Office Staff | 6.88 |
| Conf Room | Facilities |  |
| Junior Staff | Office Staff | 3.75 |
| Printing | External |  |

## Schedule

| ID | WBS | Task | Type | Duration | Start | Finish | Predecessors | Complete | Remaining | Actual start | Baseline start | Baseline finish | Baseline duration | Total slack | Resources | Work | Actual work | Cost | Baseline cost | Actual cost |
| --- | --- | --- | --- | --- | --- | --- | --- | --- | --- | --- | --- | --- | --- | --- | --- | --- | --- | --- | --- | --- |
| 1 | 1 | **National Health Campaign** |  | 29d | 2024-03-06 | 2024-04-14 |  | 34% | 19.21d | 2024-03-05 | 2024-03-06 | 2024-04-14 | 29d |  |  | 472h | 152h | 4,344.42 | 4,314.42 | 1,500.67 |
| 2 | 1.1 | **Survey Setup** |  | 10.5d | 2024-03-06 A | 2024-03-20 |  | 58% | 4.43d |  | 2024-03-06 | 2024-03-19 | 10d | 0d |  | 196h | 112h | 990.19 | 960.19 | 731.44 |
| 3 | 1.1.1 | **Planning** |  | 10.5d | 2024-03-06 A | 2024-03-20 |  | 52% | 5.06d |  | 2024-03-06 | 2024-03-19 | 10d | 0d |  | 112h | 58h | 517.69 | 487.69 | 405.19 |
| 4 | 1.1.1.1 | Design questionnaire | manual | 2d | 2024-03-06 A | 2024-03-07 A |  | 100% |  |  | 2024-03-06 | 2024-03-07 | 2d |  | Joanne Kelly | 16h | 16h | 307.69 | 307.69 | 307.69 |
| 5 | 1.1.1.2 | Type questionnaire | manual | 2d | 2024-03-08 A | 2024-03-09 A | 4 | 100% |  |  | 2024-03-08 | 2024-03-08 | 1d |  | Junior Staff | 16h | 16h | 60 | 30 | 60 |
| 6 | 1.1.1.3 | Print questionnaire | manual | 1.4w | 2024-03-10 A | 2024-03-20 | 10, 5 | 36% | 0.9w |  | 2024-03-06 | 2024-03-13 | 1w |  | Printing | 56h | 20h |  |  |  |
| 7 | 1.1.1.4 | Invite interviewers to briefing meeting | manual | 3d | 2024-03-10 A | 2024-03-14 | 6SS | 25% | 2.25d |  | 2024-03-06 | 2024-03-11 | 3d |  | Riona Carr | 24h | 6h | 150 | 150 | 37.5 |
| 8 | 1.1.1.5 | Survey planning complete | milestone, manual | 0d | 2024-03-20 | 2024-03-20 | 6 |  |  |  | 2024-03-19 | 2024-03-19 | 0d |  |  |  |  |  |  |  |
| 9 | 1.1.2 | **Briefing Setup** |  | 7.5d | 2024-03-06 A | 2024-03-15 |  | 66% | 2.53d |  | 2024-03-06 | 2024-03-15 | 7.5d | 0d |  | 84h | 54h | 472.5 | 472.5 | 326.25 |
| 10 | 1.1.2.1 | Book conference room for briefing meeting | manual | 4h | 2024-03-06 A | 2024-03-06 A |  | 100% |  |  | 2024-03-06 | 2024-03-06 | 4h |  | Tom Joyce | 4h | 4h | 27.5 | 27.5 | 27.5 |
| 11 | 1.1.2.2 | Contact interviewing locations | manual | 2d | 2024-03-06 A | 2024-03-07 | 10SS | 75% | 0.5d |  | 2024-03-06 | 2024-03-07 | 2d |  | Tom Joyce | 16h | 12h | 110 | 110 | 82.5 |
| 12 | 1.1.2.3 | Prepare rosters | manual | 4d | 2024-03-06 A | 2024-03-11 |  | 75% | 1d |  | 2024-03-06 | 2024-03-11 | 4d |  | Tom Joyce | 32h | 24h | 220 | 220 | 165 |
| 13 | 1.1.2.4 | Prepare packs for each interviewer | manual | 3d | 2024-03-12 A | 2024-03-14 | 12 | 50% | 1.5d |  | 2024-03-12 | 2024-03-14 | 3d |  | Junior Staff | 24h | 12h | 90 | 90 | 45 |
| 14 | 1.1.2.5 | Briefing Meeting with Interviewers | manual | 4h | 2024-03-15 A | 2024-03-15 | 13 | 25% | 3h |  | 2024-03-15 | 2024-03-15 | 4h |  | Conf Room; Riona Carr | 8h | 2h | 25 | 25 | 6.25 |
| 15 | 1.1.2.6 | Interviewers debriefing complete | milestone, manual | 0d | 2024-03-15 | 2024-03-15 | 14 |  |  |  | 2024-03-15 | 2024-03-15 | 0d |  |  |  |  |  |  |  |
| 16 | 1.2 | **Data Processing** |  | 15d | 2024-03-05 | 2024-03-26 |  |  |  |  | 2024-03-05 | 2024-03-26 | 15d | 0d |  | 148h |  | 892.69 | 892.69 |  |
| 17 | 1.2.1 | Prepare Book-in forms | manual | 2d | 2024-03-05 | 2024-03-07 |  |  |  |  | 2024-03-05 | 2024-03-07 | 2d |  | Riona Carr | 16h |  | 100 | 100 |  |
| 18 | 1.2.2 | Check questionaires | manual | 2d | 2024-03-13 | 2024-03-14 |  |  |  |  | 2024-03-13 | 2024-03-14 | 2d |  | Junior Staff | 16h |  | 60 | 60 |  |
| 19 | 1.2.3 | Code questionaires | manual | 1.5w | 2024-03-05 | 2024-03-14 | 18FF |  |  |  | 2024-03-05 | 2024-03-14 | 1.5w |  | Junior Staff | 60h |  | 225 | 225 |  |
| 20 | 1.2.4 | Input data in computer | manual | 3d | 2024-03-12 | 2024-03-14 | 19FS-3d |  |  |  | 2024-03-12 | 2024-03-14 | 3d |  | Junior Staff | 24h |  | 90 | 90 |  |
| 21 | 1.2.5 | Analyse the data | manual | 2d | 2024-03-22 | 2024-03-26 | 20 |  |  |  | 2024-03-22 | 2024-03-26 | 2d |  | Joanne Kelly; Tom Joyce | 32h |  | 417.69 | 417.69 |  |
| 22 | 1.2.6 | Data processing complete | milestone, manual | 0d | 2024-03-26 | 2024-03-26 | 21 |  |  |  | 2024-03-26 | 2024-03-26 | 0d |  |  |  |  |  |  |  |
| 23 | 1.3 | **Interpretation** |  | 8d | 2024-03-06 A | 2024-03-18 |  | 31% | 5.5d |  | 2024-03-06 | 2024-03-18 | 8d | 0d |  | 128h | 40h | 2,461.54 | 2,461.54 | 769.23 |
| 24 | 1.3.1 | Prepare presentation | manual | 3d | 2024-03-06 | 2024-03-08 |  |  |  |  | 2024-03-06 | 2024-03-08 | 3d |  | Mary Bean; Joanne Kelly | 48h |  | 923.08 | 923.08 |  |
| 25 | 1.3.2 | Prepare research report | manual | 1w | 2024-03-11 A | 2024-03-15 | 24 | 50% | 0.5w |  | 2024-03-11 | 2024-03-15 | 1w |  | Joanne Kelly; Mary Bean | 80h | 40h | 1,538.46 | 1,538.46 | 769.23 |
| 26 | 1.3.3 | Project Complete | milestone, manual | 0d | 2024-03-18 | 2024-03-18 | 25 |  |  |  | 2024-03-18 | 2024-03-18 | 0d |  |  |  |  |  |  |  |
